| id | batch | area | task | source | status | progress | weight | priority | planned_start | planned_end | actual_end | owner | dependency | deliverable | acceptance | evidence | gap |
| --- | --- | --- | --- | --- | --- | --- | --- | --- | --- | --- | --- | --- | --- | --- | --- | --- | --- |
| T01 | B0 | 基线 | 确认源分支 SHA、合并分支和 App 集成 SHA | Aves + Part2 | 已完成 | 1.0 | 2 | P0 | 2026-07-29 | 2026-07-29 | 2026-07-29 | App 集成负责人 | 无 | 集成基线记录 | 分支、SHA、源提交可追溯 | birdbox-v1-baseline.json / git HEAD | 工作区仍有 155 项未提交变更，发布前需归档 |
| T02 | B0 | 契约 | 建立 OpenAPI、JSON Schema、fixture 与 ADR | 双方共用 | 已完成 | 1.0 | 4 | P0 | 2026-07-29 | 2026-07-30 | 2026-07-29 | 协议 owner | T01 | birdbox-v1@1.0.0 契约包 | 默认契约校验通过 | docs/contracts/**；ADR-001 | 盒子端尚未签署真实基线 |
| T03 | B0 | 验证 | 执行非严格契约验证并留存结果 | 双方共用 | 已完成 | 1.0 | 1 | P0 | 2026-08-01 | 2026-08-01 | 2026-08-01 | QA / 发布负责人 | T02 | 契约校验记录 | OpenAPI、refs、schema、fixture 全通过 | 2026-08-01 PASS birdbox-v1@1.0.0 | strict-baseline 当前有 13 项外部缺失 |
| T04 | B0 | 外部输入 | 补齐真实盒子仓库、固件、部署、数据库、联调地址与四方联系人 | 盒子端 | 阻塞 | 0.0 | 3 | P0 | 2026-08-01 | 2026-08-04 |  | 盒子 API owner / 项目负责人 | 外部资料 | baseline status=ready | strict-baseline 通过 | 当前 baseline status=blocked_external_inputs | 缺 13 项字段 |
| T05 | B1 | 入口 | lib/main.dart 统一进入 IntegratedBirdBootstrap | 双方共用 | 已完成 | 1.0 | 3 | P0 | 2026-07-29 | 2026-07-30 | 2026-07-29 | App 集成负责人 | T01 | 唯一生产入口 | 默认入口不引用 demo | lib/main.dart；production_entrypoint_test.dart | 无 |
| T06 | B1 | 依赖 | 统一 BirdCompanionDependencies 生命周期与全局注入 | Aves 核心 + Part2 页面 | 已完成 | 1.0 | 3 | P0 | 2026-07-29 | 2026-07-31 | 2026-07-29 | 公共 Flutter 核心 owner | T05 | 单一依赖图 | REST、WS、缓存、Repository、会话仅一组实例 | app_dependencies.dart；IntegratedBirdBootstrap | 无 |
| T07 | B1 | 导航 | 统一相册、处理进度、我的三 Tab 生产 Shell | Aves + Part2 | 已完成 | 1.0 | 3 | P0 | 2026-07-29 | 2026-07-31 | 2026-07-29 | App 集成负责人 | T05,T06 | BirdAppShell | 三 Tab 均为真实 Root；跨 Tab 可带参数 | app_shell.dart | 无 |
| T08 | B1 | 演示隔离 | 将 BirdDemoShell 与 DemoTaskExperienceDataSource 限制在显式 demo 入口 | Part2 | 已完成 | 1.0 | 1 | P0 | 2026-07-30 | 2026-07-31 | 2026-07-29 | 任务前端 | T05 | demo-only 入口与生产 ID guard | 生产路径拒绝 demo-* ID | main_bird_settings.dart；repository_task_experience_controller.dart | 演示代码仍保留，需持续防回归 |
| T09 | B1 | 验证 | 统一入口、Shell、返回键与导航测试 | 双方共用 | 已完成 | 1.0 | 2 | P1 | 2026-07-31 | 2026-08-01 | 2026-07-29 | QA / 发布负责人 | T07,T08 | 导航测试组 | 历史 B7 preflight 全测通过 | unified_shell_navigation_test.dart；B7 evidence | 2026-08-01 未完成全量 Flutter 复跑 |
| T10 | B2 | 模型 | 统一 Job 状态、进度、来源项目、动作与错误 DTO | 双方共用 | 已完成 | 1.0 | 3 | P0 | 2026-07-29 | 2026-08-01 | 2026-07-29 | 公共 Flutter 核心 owner | T02 | v1 DTO 与兼容解析 | queued、0..1、扁平/嵌套错误均有测试 | job_models.dart；api_exception.dart；api_contract_compatibility_test.dart | idle 仍保留一个兼容周期 |
| T11 | B2 | 审阅模型 | 审阅写入改为 UserDecisionPatch 三态语义 | Aves | 已完成 | 1.0 | 2 | P0 | 2026-07-30 | 2026-08-01 | 2026-07-29 | 相册 / 审阅负责人 | T02 | Patch DTO 与 diff | 省略/空值/空数组语义可测试 | review_models.dart；user_decision_patch_test.dart | 需真实盒子确认 409 与 null 语义 |
| T12 | B2 | 缓存 | 增加 Hive schema 迁移、pending quarantine 与设置存储 | 双方共用 | 已完成 | 1.0 | 3 | P1 | 2026-07-30 | 2026-08-01 | 2026-07-29 | 公共 Flutter 核心 owner | T10 | CacheSchemaMigrator / SettingsStore | 旧缓存迁移不丢 pending 操作 | cache_schema_migrator.dart；cache_schema_migration_test.dart | 发布前仍需真机升级/降级验证 |
| T13 | B2 | 隔离 | 相册视图、详情、媒体 identity 按设备和项目隔离 | Aves | 已完成 | 1.0 | 2 | P1 | 2026-07-30 | 2026-08-01 | 2026-07-29 | 相册 / 审阅负责人 | T12 | 设备命名空间缓存键 | 同 ID 跨设备不串数据 | gallery_cubit.dart；media_cache_identity.dart；相关测试 | 需真机双设备复核 |
| T14 | B2 | 协议清理 | 移除离线批量 payload 中 wire batch_id，仅保留 project_id | Aves | 进行中 | 0.5 | 2 | P1 | 2026-08-01 | 2026-08-03 |  | 相册 / 审阅负责人 | T02,T12 | 纯 v1 offline payload | 严格服务端不再收到 batch_id | 当前 photo_repository_impl.dart 仍写 batch_id | 与 ADR-001 不一致 |
| T15 | B2 | 验证 | 在当前工作区重新执行 B2 相关 Flutter 测试 | 双方共用 | 进行中 | 0.8 | 1 | P1 | 2026-08-01 | 2026-08-03 |  | QA / 发布负责人 | T10-T14 | 当前树测试证据 | DTO、缓存、审阅测试通过 | 历史 B7 通过；本次 Flutter 进程等待无输出后终止 | 需空闲执行窗口 |
| T16 | B3 | 配对 | 实现 POST /device/pair 与配对 UI | 双方共用 | 已完成 | 1.0 | 2 | P0 | 2026-07-30 | 2026-08-02 | 2026-07-29 | App 网络 | T02 | PairingApi + PairingCodeForm | 配对码换取凭据 | pairing_api.dart；pairing_code_form.dart | 需真实盒子协议确认 |
| T17 | B3 | 会话 | 实现 Android Keystore 安全会话、恢复、吊销和切设备 | 双方共用 | 已完成 | 1.0 | 3 | P0 | 2026-07-30 | 2026-08-03 | 2026-07-29 | App 网络 | T16 | SecureSessionStore / SessionCoordinator | Token 不写 Hive，401/403 清会话 | secure_session_store.dart；session_coordinator.dart | 需目标 Android 机型复核 Keystore |
| T18 | B3 | 实时鉴权 | WebSocket 携带 Bearer 与 API version，并阻断 401/403 重连 | 双方共用 | 已完成 | 1.0 | 2 | P0 | 2026-07-31 | 2026-08-03 | 2026-07-29 | App 网络 / 盒子安全 | T17 | Authenticated EventClient | WS 与 REST 共享身份 | event_client.dart | 真实盒子是否支持 Header 待验证 |
| T19 | B3 | 资源鉴权 | 媒体与日志采用短时签名 URL，过期可刷新 | 双方共用 | 已完成 | 1.0 | 2 | P0 | 2026-07-31 | 2026-08-03 | 2026-07-29 | App 网络 / 盒子安全 | T17 | signed asset policy | 不向跨域资源透传 Bearer | ApiClient.downloadSignedBytes；LogDownloadService | 真实盒子签名时钟偏差待验证 |
| T20 | B3 | mock 验证 | mock 覆盖配对、REST/WS 鉴权、吊销、签名资源 | 双方共用 | 已完成 | 1.0 | 2 | P1 | 2026-08-01 | 2026-08-04 | 2026-07-29 | 联调 / QA | T16-T19 | 鉴权 mock 与测试 | 历史预检相关测试通过 | authentication_flow_test.dart；mock README | mock 不替代真盒 |
| T21 | B3 | 真盒验收 | 真实盒子完成配对、会话恢复/吊销、WS、图片和日志 E2E | 盒子端 + App | 阻塞 | 0.0 | 3 | P0 | 2026-08-05 | 2026-08-07 |  | App 网络 / 盒子安全 / QA | T04,T16-T20 | 真盒鉴权 E2E 证据 | 六通道身份链路一致 | 未提供真实盒子环境 | 外部环境、联系人、固件缺失 |
| T22 | B4 | 任务 API | 补齐 SD 扫描、项目创建、导入、分析与报告端点 | Part2 + 双方共用 | 已完成 | 1.0 | 4 | P0 | 2026-07-30 | 2026-08-04 | 2026-07-29 | 任务前端 / 盒子任务 | T02,T10 | Storage/Batch/Job Repository 方法 | 生产控制器可取得真实 project_id/job_id | features/storage；BatchApi.create；JobApi.createImport/createAnalysis/report | 盒子端实现状态未知 |
| T23 | B4 | 控制器 | TaskExperienceRoot 使用 RepositoryTaskExperienceController | Part2 | 已完成 | 1.0 | 3 | P0 | 2026-07-31 | 2026-08-04 | 2026-07-29 | 任务前端 | T07,T22 | 生产任务状态机 | 无 demo ID，写成功后才提交本地上下文 | task_experience_root.dart；repository_task_experience_controller.dart | 无 |
| T24 | B4 | 恢复 | WS 完整事件更新；不可用时 4 秒轮询并恢复权威状态 | 双方共用 | 已完成 | 1.0 | 2 | P1 | 2026-08-01 | 2026-08-04 | 2026-07-29 | 任务前端 / App 网络 | T18,T23 | 事件与轮询恢复逻辑 | 断线不伪造任务，重连重新 GET | RepositoryTaskExperienceController._configurePolling | 真盒事件完整性待验证 |
| T25 | B4 | mock | mock 支持项目/任务/报告、幂等重放与可选持久化 | 双方共用 | 已完成 | 1.0 | 2 | P1 | 2026-08-01 | 2026-08-05 | 2026-07-29 | 联调 / QA | T22 | B4/B7 mock 能力 | 并发同键只执行一次，重启可恢复 | mock_box_server_test.dart；mock README | 状态文件不是正式数据库 |
| T26 | B4 | 真盒验收 | 真实盒子扫描→建项目→导入→分析→杀 App→恢复同一任务 | 盒子端 + App | 阻塞 | 0.0 | 3 | P0 | 2026-08-07 | 2026-08-10 |  | 任务前端 / 盒子任务 / QA | T04,T21-T25 | 任务 E2E 证据 | 真实 project_id/job_id 全流程可恢复 | 尚无真盒证据 | 真实盒子与数据库信息缺失 |
| T27 | B5 | 上下文 | 任务分析完成携带 project_id 切到相册并打开 GalleryArgs | Aves + Part2 | 已完成 | 1.0 | 2 | P0 | 2026-07-31 | 2026-08-04 | 2026-07-29 | App 集成负责人 | T07,T23 | 跨 Tab project_id 路由 | 不依赖当前项目猜测 | TaskExperienceRoot.onOpenGallery；BirdAppShell._openTabRoute | 无 |
| T28 | B5 | 相册审阅 | 真实 Album/Gallery/Detail/Group/Comparison/Review 页面进入统一 Shell | Aves | 已完成 | 1.0 | 3 | P0 | 2026-07-29 | 2026-08-04 | 2026-07-29 | 相册 / 审阅负责人 | T07,T27 | 相册审阅生产链路 | 不显示占位相册 | AlbumHomePage；features/gallery；features/review | 真盒媒体多样性未验证 |
| T29 | B5 | 离线冲突 | 离线审阅/批量操作入队、幂等重放、409 冲突处理 | Aves | 已完成 | 1.0 | 3 | P0 | 2026-07-30 | 2026-08-05 | 2026-07-29 | 相册 / 审阅负责人 | T11-T13 | BirdSyncService + 冲突 UI | 成功删除队列；409 不静默覆盖 | bird_sync_service.dart；offline_sync_test.dart | T14 字段漂移待清理 |
| T30 | B5 | 隔离验证 | 双设备同 project_id/file_id 缓存与断点不串号 | Aves | 已完成 | 1.0 | 2 | P1 | 2026-08-01 | 2026-08-05 | 2026-07-29 | 相册 / 审阅负责人 / QA | T13,T29 | 多设备隔离测试 | 缓存 key 与 media identity 隔离 | album_view_cache_key_test.dart；media_cache_identity_test.dart | 需双真盒复核 |
| T31 | B5 | 真盒验收 | 真盒相册、审阅、离线重放、409 冲突和双设备验证 | 盒子端 + App | 阻塞 | 0.0 | 3 | P0 | 2026-08-09 | 2026-08-11 |  | 相册 / 审阅负责人 / QA | T04,T21,T26-T30 | 真盒相册审阅证据 | 完整照片链路与冲突闭环 | 未提供真盒数据集 | 盒子环境与脱敏真实照片缺失 |
| T32 | B6 | 复制任务 | 复制估算、创建、进度、失败项和报告接入 Repository | Aves + Part2 | 已完成 | 1.0 | 3 | P0 | 2026-08-01 | 2026-08-07 | 2026-07-29 | 任务 / 设置负责人 | T22,T27,T29 | 复制后半链路 | mode/target/xmp/verify/version 由服务端约束 | CopyApi；CopyConfirmationCubit；ProductionTaskResultPage | 真盒目标盘错误场景未验 |
| T33 | B6 | 日志 | 任务与系统日志页导出并下载短签名诊断包 | 双方共用 | 已完成 | 1.0 | 2 | P0 | 2026-08-01 | 2026-08-07 | 2026-07-29 | 任务 / 设置负责人 | T19,T22 | 日志生成与刷新下载 | 文件非空；签名过期可重新申请 | SystemLogsPage；TaskExperienceRoot._exportTaskLog；LogDownloadService | 真盒日志格式与权限未验 |
| T34 | B6 | 设置 | 设置持久化、设备管理与设备事实状态接入共享依赖 | Part2 | 已完成 | 1.0 | 2 | P1 | 2026-08-01 | 2026-08-07 | 2026-07-29 | 任务 / 设置负责人 | T06,T12 | SettingsExperienceRoot + SettingsStore | 重启保留偏好；设备状态来自 Repository | settings_experience_root.dart；settings_store.dart | 真机重启与多用户策略待验 |
| T35 | B6 | 一致性 | 设备状态页控制任务时补 version，或统一复用 JobRepository.control | 双方共用 | 进行中 | 0.5 | 1 | P1 | 2026-08-01 | 2026-08-03 |  | 公共 Flutter 核心 owner | T10,T32 | 统一任务控制语义 | 所有 actions 请求均携带服务端版本 | DeviceStatusApi 当前 body 只有 action；JobApi 已带 version | 存在 409/并发覆盖风险 |
| T36 | B6 | 维护性 | 明确 TaskExperienceRoot 与 JobCenterPage 的单一产品入口和复用边界 | Aves + Part2 | 进行中 | 0.25 | 1 | P2 | 2026-08-03 | 2026-08-06 |  | App 集成负责人 | T07,T23,T32 | 任务展示架构决议 | 同一业务状态不维护两套交互逻辑 | 两条 UI 路径共享 JobRepository | 长期维护与行为分叉风险 |
| T37 | B6 | 真盒验收 | 真盒复制、失败项、报告、日志和设置重启闭环 | 盒子端 + App | 阻塞 | 0.0 | 3 | P0 | 2026-08-11 | 2026-08-13 |  | 任务 / 设置负责人 / QA | T04,T21,T26,T31-T36 | 后半链路 E2E 证据 | 空间不足/离线目标/失败项/日志均通过 | 尚无真实盒子证据 | 盒子、目标盘与日志权限信息缺失 |
| T38 | B7 | 门禁实现 | 扩充 mock、契约校验、生产完整性和 B7 门禁脚本 | 双方共用 | 已完成 | 1.0 | 3 | P0 | 2026-07-29 | 2026-08-08 | 2026-07-29 | QA / 发布负责人 | T02,T05,T25 | run_b7_gate.ps1 与 mock 能力 | 同一入口收集格式/契约/测试/构建证据 | tool/release；tool/mock_box_server | Release 模式外部输入尚未满足 |
| T39 | B7 | 历史预检 | 保留 2026-07-29 B7 Preflight 通过证据 | 双方共用 | 已完成 | 1.0 | 1 | P1 | 2026-07-29 | 2026-07-29 | 2026-07-29 | QA / 发布负责人 | T38 | b7-gate-evidence.json | format/analyze/test/debug APK 均记录 passed | Debug APK 202368038 bytes；SHA256 833DA5... | 证据基于脏工作树且不是 2026-08-01 新鲜复跑 |
| T40 | B7 | 当前复跑 | 对当前 155 项变更重新执行全量 Flutter analyze/test/debug gate | 双方共用 | 进行中 | 0.4 | 2 | P0 | 2026-08-01 | 2026-08-04 |  | QA / 发布负责人 | T14,T15,T35,T36,T38 | 当前树新鲜预检证据 | B7 Preflight 全步骤 passed | 本次 contract 与 production integrity 已通过；Flutter test 等待无输出后终止 | Flutter 启动锁/后台进程需释放 |
| T41 | B7 | 真盒证据 | 收集 11 个必需真盒 E2E case 与固件/schema 证据 | 盒子端 + QA | 阻塞 | 0.0 | 2 | P0 | 2026-08-08 | 2026-08-14 |  | 盒子 API owner / QA | T04,T21,T26,T31,T37 | bird-real-box-e2e.json | 11 case 全 passed 且证据引用非空 | 当前未提供 | 真实盒子、固件与数据库基线缺失 |
| T42 | B7 | 签名发布 | 注入正式签名、证书指纹并构建/验签 release APK | App 发布 | 阻塞 | 0.0 | 2 | P0 | 2026-08-14 | 2026-08-15 |  | App 发布负责人 | T04,T40,T41 | 已验签 release APK | 证书 SHA256 与批准指纹一致 | 当前缺正式 keystore/环境变量 | 签名材料未提供 |
| T43 | B7 | 发布决策 | 清理并提交工作区、执行 Release gate 与 GO/NO-GO 评审 | 双方共用 | 待开始 | 0.0 | 2 | P0 | 2026-08-15 | 2026-08-15 |  | 项目负责人 / QA / 发布 | T04,T40-T42 | 发布决议与回滚点 | 工作区干净、strict baseline、真盒 E2E、签名均通过 | 当前 155 项变更，尚不满足 Release gate | 依赖前述所有阻塞项 |

Links (id, flow, source_module, target_module, mechanism, protocol, status, gap):
- I01 生产启动 lib/main.dart IntegratedBirdBootstrap → BirdCompanionDependencies → BirdCompanionApp 单入口创建单依赖图与单 MaterialApp 进程内注入 已接入 无
- I02 三 Tab 导航 BirdAppShell AlbumHomePage / TaskExperienceRoot / SettingsExperienceRoot 三个嵌套 Navigator；BirdShellNavigation 跨 Tab 切换并传参 GalleryArgs(project_id) 已接入 需持续回归返回键和深链
- I03 发现与连接 ConnectionPage / ConnectionCubit ConnectionRepository → ConnectionApi mDNS、二维码、手填地址后 GET device/status GET /api/v1/device/status 已接入 真机 mDNS 与目标网络未验
- I04 配对与会话 PairingApi / SessionCoordinator ApiClient + EventClient + Android Keystore pair 获 Token；原子配置 REST/WS；401/403 清会话 POST /device/pair；Bearer；X-Api-Version 客户端已接入 真盒 Header/吊销策略待验
- I05 任务前半链路 TaskExperienceRoot StorageRepository / BatchRepository / JobRepository 扫描→创建项目→导入→自动创建分析→事件/轮询刷新 scan/rescan；POST projects/imports/analysis-jobs；GET jobs 客户端与 mock 已接入 盒子端真实实现待确认
- I06 任务到相册 RepositoryTaskExperienceController BirdAppShell → GalleryPage 分析完成事件携带 source_project_id，切到相册 Tab 并 push GalleryArgs project_id 已接入 真盒任务必须返回 source_project_id
- I07 相册读取 AlbumHomePage / GalleryCubit BatchRepository / PhotoRepository 按设备与项目分页、筛选、缓存回退 GET projects/current；GET projects/{id}/files/scenes/groups 已接入 真实 1200 张不同照片性能未验
- I08 审阅写入 Detail/Group/Comparison Cubit ReviewRepository → BirdSyncService UserDecisionPatch 在线写；断网入队；联网复用幂等键；409 进入冲突 POST files/{id}/decision；version 已接入 离线批量 payload 仍有 batch_id
- I09 复制与任务后半链路 CopyConfirmationPage / TaskExperienceRoot CopyRepository / JobRepository estimate→create→job detail/failures/report→复制完成通知 copy/estimate；POST copy；GET jobs/report 客户端与 mock 已接入 目标盘/空间不足真盒场景未验
- I10 任务控制 TaskExperienceRoot / JobCenterPage / DeviceStatusPage JobRepository / DeviceRepository 任务页带 version；设备状态页直接调用 action POST jobs/{id}/actions 部分一致 DeviceStatusApi 未携带 version；存在两套 UI 路径
- I11 日志下载 SystemLogsPage / TaskDetail JobRepository.exportLogs → LogDownloadService 获取短签名 URL；过期重新申请；下载到 Downloads/Documents POST logs/export；signed GET 客户端与 mock 已接入 真盒日志权限与文件格式未验
- I12 设置与跨模块刷新 BirdSettingsController / SettingsStore Hive + AppDataChangeBus + 各 Cubit UI 偏好持久化；精确发布资源变更；设备事实只读 settings:ui:v1 / AppDataResource 已接入 真机重启与产品级账号策略未验
